# QuickQuick_Schedule_Detail_27042010

Schedule from MS Project, 2010-04-01 to 2010-05-31, A marks actual dates.
vtm

## Calendars

- Standard: Mon-Fri 08:00-12:00, 13:00-17:00; Sat-Sun off.

## Resources

| Resource |
| --- |
| TrungPM |
| All |
| HuyMQ |
| coder1 |
| coder2 |
| coder3 |
| coder4 |

## Schedule

| ID | WBS | Task | Duration | Start | Finish | Predecessors | Complete | Remaining | Total slack | Free slack | Constraint | Resources | Work | Actual work |
| --- | --- | --- | --- | --- | --- | --- | --- | --- | --- | --- | --- | --- | --- | --- |
| 1 | 1 | **Quick Quick - ERP** | 43d? | 2010-04-01 A | 2010-05-31 |  | 24% | 32.57d? | 0d |  |  |  | 1032h | 246.4h |
| 2 | 1.1 | **Khảo sát yêu cầu - Phân tích** | 11d? | 2010-04-01 A | 2010-04-15 A |  | 100% |  |  |  |  |  | 132h | 132h |
| 3 | 1.1.1 | Thu thập thông tin, tổng hợp nhu cầu quản lý | 6d? | 2010-04-01 A | 2010-04-08 A |  | 100% |  |  |  | start no earlier than 2010-04-01 | HuyMQ; TrungPM [50%] | 72h | 72h |
| 4 | 1.1.2 | Định hình yêu cầu - Xây dựng giải pháp | 5d? | 2010-04-09 A | 2010-04-15 A | 3 | 100% |  |  |  | start no earlier than 2010-04-09 | HuyMQ; TrungPM [50%] | 60h | 60h |
| 5 | 1.2 | **Thiết kế tài liệu hệ thống** | 6d? | 2010-04-16 A | 2010-04-23 | 4 | 47% | 3.2d? | 26d |  |  |  | 48h | 22.4h |
| 6 | 1.2.1 | Review chức năng, giải pháp hệ thống | 2d? | 2010-04-16 A | 2010-04-19 A |  | 100% |  |  |  | start no earlier than 2010-04-16 | HuyMQ | 16h | 16h |
| 7 | 1.2.2 | Thiết kế mô hình database | 4d? | 2010-04-20 A | 2010-04-23 | 6 | 20% | 3.2d? | 26d |  | start no earlier than 2010-04-20 | HuyMQ | 32h | 6.4h |
| 8 | 1.3 | **Xây dựng khung phát triễn phần mềm** | 17d? | 2010-04-01 A | 2010-04-23 A |  | 100% |  |  |  |  |  | 92h | 92h |
| 9 | 1.3.1 | Thiết kế cấu trúc hướng đối tượng (customize Zend, ExtJS framework) | 11d? | 2010-04-01 A | 2010-04-15 A |  | 100% |  |  |  | finish no earlier than 2010-04-15 | TrungPM [50%] | 44h | 44h |
| 10 | 1.3.2 | Xây dựng module phân quyền người dùng | 3d | 2010-04-16 A | 2010-04-20 A | 9 | 100% |  |  |  | start no earlier than 2010-04-16 | TrungPM | 24h | 24h |
| 11 | 1.3.3 | Xây dựng module hỗ trợ đa ngôn ngữ | 3d? | 2010-04-21 A | 2010-04-23 A | 10 | 100% |  |  |  | start no earlier than 2010-04-21 | TrungPM | 24h | 24h |
| 12 | 1.4 | **Phát triễn phần mềm** | 18d? | 2010-04-26 | 2010-05-19 |  |  |  | 8d |  |  |  | 544h |  |
| 13 | 1.4.1 | **Xây dựng module Bán hàng (Sale)** | 15d? | 2010-04-26 | 2010-05-14 |  |  |  | 11d |  |  |  | 112h |  |
| 14 | 1.4.1.1 | Phân nhóm khách hàng | 1d? | 2010-04-26 | 2010-04-26 |  |  |  | 22d | 0d | finish no earlier than 2010-04-26 | coder1 | 8h |  |
| 15 | 1.4.1.2 | Danh mục khách hàng | 1d? | 2010-04-27 | 2010-04-27 | 14 |  |  | 22d | 0d |  | coder1 | 8h |  |
| 16 | 1.4.1.3 | Phân nhóm hàng bán | 1d? | 2010-04-28 | 2010-04-28 | 15 |  |  | 22d | 0d |  | coder1 | 8h |  |
| 17 | 1.4.1.4 | Danh mục hàng bán | 1d? | 2010-04-29 | 2010-04-29 | 16 |  |  | 22d |  |  | coder1 | 8h |  |
| 18 | 1.4.1.5 | Báo giá định kỳ | 1d? | 2010-05-03 | 2010-05-03 |  |  |  | 8d | 0d | start no earlier than 2010-05-03 | coder1 | 8h |  |
| 19 | 1.4.1.6 | Báo giá theo yêu cầu | 1d? | 2010-05-04 | 2010-05-04 | 18 |  |  | 8d | 0d |  | coder1 | 8h |  |
| 20 | 1.4.1.7 | Hợp đồng nguyên tắc | 1d? | 2010-05-05 | 2010-05-05 | 19 |  |  | 8d | 0d |  | coder1 | 8h |  |
| 21 | 1.4.1.8 | Hợp đồng phát sinh | 1d? | 2010-05-06 | 2010-05-06 | 20 |  |  | 8d | 0d |  | coder1 | 8h |  |
| 22 | 1.4.1.9 | Mua thường xuyên | 1d? | 2010-05-07 | 2010-05-07 | 21 |  |  | 8d | 0d |  | coder1 | 8h |  |
| 23 | 1.4.1.10 | Đơn đặt hàng | 2d | 2010-05-10 | 2010-05-11 | 22 |  |  | 8d | 0d |  | coder1 | 16h |  |
| 24 | 1.4.1.11 | Xác nhận đặt hàng | 1d? | 2010-05-12 | 2010-05-12 | 23 |  |  | 8d | 0d |  | coder1 | 8h |  |
| 25 | 1.4.1.12 | Hàng bán trả lại | 1d? | 2010-05-13 | 2010-05-13 | 24 |  |  | 8d | 0d |  | coder1 | 8h |  |
| 26 | 1.4.1.13 | Giảm giá hàng bán | 1d? | 2010-05-14 | 2010-05-14 | 25 |  |  | 8d | 0d |  | coder1 | 8h |  |

| ID | WBS | Task | Duration | Start | Finish | Predecessors | Total slack | Free slack | Constraint | Resources | Work |
| --- | --- | --- | --- | --- | --- | --- | --- | --- | --- | --- | --- |
| 27 | 1.4.2 | **Xây dựng module Mua hàng (Purchase)** | 15d? | 2010-04-26 | 2010-05-14 |  | 11d |  |  |  | 112h |
| 28 | 1.4.2.1 | Phân nhóm hàng mua | 1d? | 2010-04-26 | 2010-04-26 |  | 22d | 0d | finish no earlier than 2010-04-26 | coder2 | 8h |
| 29 | 1.4.2.2 | Danh mục hàng mua | 1d? | 2010-04-27 | 2010-04-27 | 28 | 22d | 0d | finish no earlier than 2010-04-27 | coder2 | 8h |
| 30 | 1.4.2.3 | Phân nhóm đối tượng | 1d? | 2010-04-28 | 2010-04-28 | 29 | 22d | 0d |  | coder2 | 8h |
| 31 | 1.4.2.4 | DM nhà sản xuất | 1d? | 2010-04-29 | 2010-04-29 | 30 | 22d |  |  | coder2 | 8h |
| 32 | 1.4.2.5 | DM nhà cung cấp | 1d? | 2010-05-03 | 2010-05-03 |  | 8d | 0d | start no earlier than 2010-05-03 | coder2 | 8h |
| 33 | 1.4.2.6 | Hiện trạng tồn kho | 1d? | 2010-05-04 | 2010-05-04 | 32 | 8d | 0d |  | coder2 | 8h |
| 34 | 1.4.2.7 | Hiện trạng tồn quỹ | 1d? | 2010-05-05 | 2010-05-05 | 33 | 8d | 0d |  | coder2 | 8h |
| 35 | 1.4.2.8 | Lịch sử mua hàng | 1d? | 2010-05-06 | 2010-05-06 | 34 | 8d | 0d |  | coder2 | 8h |
| 36 | 1.4.2.9 | Kế hoạch mua hàng | 1d? | 2010-05-07 | 2010-05-07 | 35 | 8d | 0d |  | coder2 | 8h |
| 37 | 1.4.2.10 | Theo dõi KH mua | 1d? | 2010-05-10 | 2010-05-10 | 36 | 8d | 0d |  | coder2 | 8h |
| 38 | 1.4.2.11 | Đơn đặt hàng | 2d | 2010-05-11 | 2010-05-12 | 37 | 8d | 0d |  | coder2 | 16h |
| 39 | 1.4.2.12 | Ứng tiền mua hàng | 1d? | 2010-05-13 | 2010-05-13 | 38 | 8d | 0d | finish no earlier than 2010-05-12 | coder2 | 8h |
| 40 | 1.4.2.13 | Trả tiền mua hàng | 1d? | 2010-05-14 | 2010-05-14 | 39 | 8d | 0d | start no earlier than 2010-05-13 | coder2 | 8h |
| 41 | 1.4.3 | **Xây dựng module Kho (Inventory)** | 11d? | 2010-04-26 | 2010-05-10 |  | 13d |  |  |  | 80h |
| 42 | 1.4.3.1 | Danh mục kho hàng | 1d? | 2010-04-26 | 2010-04-26 |  | 22d | 0d | start no earlier than 2010-04-26 | coder3 | 8h |
| 43 | 1.4.3.2 | Phân nhóm hàng tkho | 1d? | 2010-04-27 | 2010-04-27 | 42 | 22d | 0d |  | coder3 | 8h |
| 44 | 1.4.3.3 | Nhập kho hàng mua | 1d? | 2010-04-28 | 2010-04-28 | 43 | 22d | 0d |  | coder3 | 8h |
| 45 | 1.4.3.4 | Nhập kho trả lại | 1d? | 2010-04-29 | 2010-04-29 | 44 | 22d |  |  | coder3 | 8h |
| 46 | 1.4.3.5 | Xuất kho bán hàng | 1d | 2010-05-03 | 2010-05-03 |  | 8d | 0d | start no earlier than 2010-05-03 | coder3 | 8h |
| 47 | 1.4.3.6 | Xuất kho sử dụng | 1d? | 2010-05-04 | 2010-05-04 | 46 | 8d | 0d |  | coder3 | 8h |
| 48 | 1.4.3.7 | Kiểm khu vực (tháng) | 2d | 2010-05-05 | 2010-05-06 | 47 | 8d | 0d |  | coder3 | 16h |
| 49 | 1.4.3.8 | Kiểm toàn bộ (quý) | 2d | 2010-05-07 | 2010-05-10 | 48 | 8d | 0d |  | coder3 | 16h |
| 50 | 1.4.4 | **Xây dựng module Kế toán (Accountant)** | 18d? | 2010-04-26 | 2010-05-19 |  | 8d |  |  |  | 208h |
| 51 | 1.4.4.1 | Hệ thống tài khoản | 1d | 2010-04-26 | 2010-04-26 |  | 22d | 0d | finish no earlier than 2010-04-26 | coder4 | 8h |
| 52 | 1.4.4.2 | Danh mục ngoại tệ | 1d? | 2010-04-27 | 2010-04-27 | 51 | 22d | 0d |  | coder4 | 8h |
| 53 | 1.4.4.3 | Danh mục doanh thu | 1d? | 2010-04-28 | 2010-04-28 | 52 | 22d | 0d |  | coder4 | 8h |
| 54 | 1.4.4.4 | Danh mục chi phí | 1d? | 2010-04-29 | 2010-04-29 | 53 | 22d |  |  | coder4 | 8h |
| 55 | 1.4.4.5 | Hóa đơn mua hàng | 2d | 2010-05-03 | 2010-05-04 |  | 8d | 0d | start no earlier than 2010-05-03 | coder4 | 16h |
| 56 | 1.4.4.6 | Công nợ phải trả | 1d? | 2010-05-05 | 2010-05-05 | 55 | 8d | 0d |  | coder4 | 8h |
| 57 | 1.4.4.7 | Phân bổ chi phí | 1d? | 2010-05-06 | 2010-05-06 | 56 | 8d | 0d |  | coder4 | 8h |
| 58 | 1.4.4.8 | Hóa đơn bán hàng | 2d | 2010-05-07 | 2010-05-10 | 57 | 8d | 0d |  | coder4 | 16h |
| 59 | 1.4.4.9 | Hàng bán trả lại | 1d? | 2010-05-11 | 2010-05-11 | 58 | 8d | 0d |  | coder4 | 8h |
| 60 | 1.4.4.10 | Giảm giá hàng bán | 1d? | 2010-05-12 | 2010-05-12 | 59 | 8d | 0d |  | coder4 | 8h |
| 61 | 1.4.4.11 | Quản lý hàng tồn kho | 1d? | 2010-05-11 | 2010-05-11 | 49 | 8d | 0d |  | coder3 | 8h |
| 62 | 1.4.4.12 | Xử lý thừa thiếu kho | 1d? | 2010-05-12 | 2010-05-12 | 61 | 8d | 0d |  | coder3 | 8h |
| 63 | 1.4.4.13 | Tính giá xuất kho | 1d? | 2010-05-13 | 2010-05-13 | 62 | 8d |  |  | coder3 | 8h |
| 64 | 1.4.4.14 | Quản lý phải thu | 1d? | 2010-05-17 | 2010-05-17 | 26 | 8d | 0d |  | coder1 | 8h |
| 65 | 1.4.4.15 | Phiếu thu | 1d? | 2010-05-18 | 2010-05-18 | 64 | 8d | 0d |  | coder1 | 8h |
| 66 | 1.4.4.16 | Giải trừ phải thu | 1d? | 2010-05-19 | 2010-05-19 | 65 | 8d |  |  | coder1 | 8h |
| 67 | 1.4.4.17 | Quản lý phải trả | 1d? | 2010-05-17 | 2010-05-17 | 40 | 8d | 0d |  | coder2 | 8h |
| 68 | 1.4.4.18 | Phiếu chi | 1d? | 2010-05-18 | 2010-05-18 | 67 | 8d | 0d |  | coder2 | 8h |
| 69 | 1.4.4.19 | Giải trừ phải trả | 1d? | 2010-05-19 | 2010-05-19 | 68 | 8d |  |  | coder2 | 8h |
| 70 | 1.4.4.20 | Quản lý ngân quỹ | 1d? | 2010-05-13 | 2010-05-13 | 60 | 8d | 0d |  | coder4 | 8h |
| 71 | 1.4.4.21 | Quản lý ngân lưu | 1d? | 2010-05-14 | 2010-05-14 | 70 | 8d | 0d |  | coder4 | 8h |
| 72 | 1.4.4.22 | Khấu hao TSCĐ | 1d? | 2010-05-17 | 2010-05-17 | 71 | 8d | 0d |  | coder4 | 8h |
| 73 | 1.4.4.23 | Chi phí trả trước | 1d? | 2010-05-18 | 2010-05-18 | 72 | 8d | 0d |  | coder4 | 8h |
| 74 | 1.4.4.24 | Phiếu định khoản | 1d? | 2010-05-19 | 2010-05-19 | 73 | 8d |  |  | coder4 | 8h |

| ID | WBS | Task | Duration | Start | Finish | Predecessors | Total slack | Free slack | Constraint | Resources | Work |
| --- | --- | --- | --- | --- | --- | --- | --- | --- | --- | --- | --- |
| 75 | 1.4.5 | **Xây dựng module Quản lí (General Legder)** | 4d? | 2010-05-14 | 2010-05-19 |  | 8d |  |  |  | 32h |
| 76 | 1.4.5.1 | Phân nhóm mặt hàng | 1d? | 2010-05-14 | 2010-05-14 | 63 | 8d |  |  | coder3 | 8h |
| 77 | 1.4.5.2 | Danh mục mặt hàng | 1d? | 2010-05-17 | 2010-05-17 | 76 | 8d |  |  | coder3 | 8h |
| 78 | 1.4.5.3 | Phân nhóm đối tượng | 1d? | 2010-05-18 | 2010-05-18 | 77 | 8d |  |  | coder3 | 8h |
| 79 | 1.4.5.4 | Danh mục đối tượng | 1d? | 2010-05-19 | 2010-05-19 | 78 | 8d |  |  | coder3 | 8h |
| 80 | 1.5 | Test tổng hợp | 20d? | 2010-04-26 | 2010-05-21 |  | 1d | 0d | finish no earlier than 2010-05-21 | HuyMQ | 160h |
| 81 | 1.6 | Release | 2d | 2010-05-24 | 2010-05-25 | 80 | 1d |  | finish no earlier than 2010-05-25 | HuyMQ; TrungPM | 32h |
| 82 | 1.7 | Thời gian dự trữ | 3d | 2010-05-27 | 2010-05-31 | 81 | 0d |  | finish no earlier than 2010-05-31 | All | 24h |
